# 널포유_개발계획서

Schedule from MS Project, 2022-03-07 to 2022-06-20, costs in ₩, A marks actual dates.

## Calendars

- 표준: Mon-Sun 08:00-12:00, 13:00-17:00.

## Resources

| Resource | Group | Rate |
| --- | --- | --- |
| 이정훈 | PM/ENG | 20000 |
| 권익현 | CM/ENG | 20000 |
| 이준용 | CM/ENG | 20000 |
| 김미래 | QA/ENG | 20000 |
| 김현지 | QA/ENG | 20000 |

## Schedule

| ID | WBS | Task | Type | Duration | Start | Finish | Predecessors | Complete | Actual finish | Resources | Work | Actual work | Cost | Actual cost | Text1 |
| --- | --- | --- | --- | --- | --- | --- | --- | --- | --- | --- | --- | --- | --- | --- | --- |
| 1 | 1 | **널포유(Nur For U) 프로젝트** |  | 106d | 2022-03-07 A | 2022-06-20 |  | 100% | 2022-06-18 |  | 2961.12h | 2961.12h | 59,222,400 | 59,222,400 | Project(Process) |
| 2 | 1.1 | **제안단계** |  | 33d | 2022-03-07 A | 2022-04-08 A |  | 100% |  |  | 306.8h | 306.8h | 6,136,000 | 6,136,000 | 단계(Phase) |
| 3 | 1.1.1 | **제안준비** |  | 33d | 2022-03-07 A | 2022-04-08 A |  | 100% |  |  | 252h | 252h | 5,040,000 | 5,040,000 | 행위(Activity) |
| 4 | 1.1.1.1 | 팀명 및 프로젝트명 선정 | manual | 1d | 2022-03-07 A | 2022-03-07 A |  | 100% |  | 이정훈 [50%] | 4h | 4h | 80,000 | 80,000 | 작업(Task) |
| 5 | 1.1.1.2 | 역할 분담 및 업무 분담 | manual | 1d | 2022-03-07 A | 2022-03-07 A |  | 100% |  | 이정훈 [50%] | 4h | 4h | 80,000 | 80,000 | 작업(Task) |
| 6 | 1.1.1.3 | 로고선정서 작성 | manual | 2d | 2022-03-07 A | 2022-03-08 A |  | 100% |  | 권익현; 김미래; 김현지 | 48h | 48h | 960,000 | 960,000 | 작업(Task) |
| 7 | 1.1.1.4 | 주제제안서 작성 | manual | 4d | 2022-03-14 A | 2022-03-17 A |  | 100% |  | 이정훈 [25%] | 8h | 8h | 160,000 | 160,000 | 작업(Task) |
| 8 | 1.1.1.5 | 주제 문제정의 | manual | 4d | 2022-03-17 A | 2022-03-20 A |  | 100% |  | 권익현 [25%]; 김미래 [50%]; 김현지 [50%]; 이정훈 [25%]; 이준용 [50%] | 64h | 64h | 1,280,000 | 1,280,000 | 작업(Task) |
| 9 | 1.1.1.6 | 주제선정서 작성 | manual | 3d | 2022-03-21 A | 2022-03-23 A | 8 | 100% |  | 이정훈 [50%] | 12h | 12h | 240,000 | 240,000 | 작업(Task) |
| 10 | 1.1.1.7 | 주제선정서 리뷰 | manual | 1d | 2022-03-24 A | 2022-03-24 A | 9 | 100% |  | 이정훈 [50%]; 권익현; 김미래; 김현지; 이준용 | 36h | 36h | 720,000 | 720,000 | 작업(Task) |
| 11 | 1.1.1.8 | 개발계획서 작성 | manual | 10d | 2022-03-21 A | 2022-03-30 A |  | 100% |  | 이정훈 [50%] | 40h | 40h | 800,000 | 800,000 | 작업(Task) |
| 12 | 1.1.1.9 | 개발계획서 리뷰 | manual | 1d | 2022-03-31 A | 2022-03-31 A | 11 | 100% |  | 이정훈 [50%]; 권익현; 김미래; 김현지; 이준용 | 36h | 36h | 720,000 | 720,000 | 작업(Task) |
| 13 | 1.1.2 | **형상관리** |  | 7d | 2022-03-14 A | 2022-03-20 A |  | 100% |  |  | 38.8h | 38.8h | 776,000 | 776,000 | 행위(Activity) |
| 14 | 1.1.2.1 | FTP 폴더 생성 | manual | 1d | 2022-03-14 A | 2022-03-14 A |  | 100% |  | 권익현 [10%] | 0.8h | 0.8h | 16,000 | 16,000 | 작업(Task) |
| 15 | 1.1.2.2 | 산출물 양식 작성 | manual | 5d | 2022-03-15 A | 2022-03-19 A |  | 100% |  | 권익현 [50%] | 20h | 20h | 400,000 | 400,000 | 작업(Task) |
| 16 | 1.1.2.3 | 산출물 양식 리뷰 | manual | 1d | 2022-03-20 A | 2022-03-20 A | 15 | 100% |  | 이정훈 [50%]; 권익현 [25%]; 김미래 [50%]; 김현지 [50%]; 이준용 [50%] | 18h | 18h | 360,000 | 360,000 | 작업(Task) |
| 17 | 1.1.3 | **프로젝트 관리계획** |  | 4d | 2022-03-28 A | 2022-03-31 A |  | 100% |  |  | 16h | 16h | 320,000 | 320,000 | 행위(Activity) |
| 18 | 1.1.3.1 | 일정 수립 | manual | 2d | 2022-03-28 A | 2022-03-29 A |  | 100% |  | 이정훈 [25%] | 4h | 4h | 80,000 | 80,000 | 작업(Task) |
| 19 | 1.1.3.2 | 자원 배정 | manual | 2d | 2022-03-30 A | 2022-03-31 A | 18 | 100% |  | 이정훈 [13%] | 2.08h | 2.08h | 41,600 | 41,600 | 작업(Task) |
| 20 | 1.1.3.3 | 비용 산정 | manual | 2d | 2022-03-30 A | 2022-03-31 A | 18 | 100% |  | 이정훈 [12%] | 1.92h | 1.92h | 38,400 | 38,400 | 작업(Task) |
| 21 | 1.1.3.4 | WBS 작성 | manual | 4d | 2022-03-28 A | 2022-03-31 A |  | 100% |  | 이정훈 [25%] | 8h | 8h | 160,000 | 160,000 | 작업(Task) |
| 22 | 1.2 | **분석단계** |  | 11d | 2022-04-04 A | 2022-04-14 A |  | 100% |  |  | 438.4h | 438.4h | 8,768,000 | 8,768,000 | 단계(Phase) |
| 23 | 1.2.1 | **자료수집** |  | 4d | 2022-04-04 A | 2022-04-07 A |  | 100% |  |  | 160h | 160h | 3,200,000 | 3,200,000 | 행위(Activity) |
| 24 | 1.2.1.1 | 현행업무 분석 | manual | 4d | 2022-04-04 A | 2022-04-07 A |  | 100% |  | 권익현; 이정훈 | 64h | 64h | 1,280,000 | 1,280,000 | 작업(Task) |
| 25 | 1.2.1.2 | 현행시스템 분석 | manual | 4d | 2022-04-04 A | 2022-04-07 A |  | 100% |  | 김미래; 김현지 | 64h | 64h | 1,280,000 | 1,280,000 | 작업(Task) |
| 26 | 1.2.1.3 | 사용자 인터뷰 | manual | 4d | 2022-04-04 A | 2022-04-07 A |  | 100% |  | 이준용 | 32h | 32h | 640,000 | 640,000 | 작업(Task) |

| ID | WBS | Task | Type | Duration | Start | Finish | Predecessors | Complete | Resources | Work | Actual work | Cost | Actual cost | Text1 |
| --- | --- | --- | --- | --- | --- | --- | --- | --- | --- | --- | --- | --- | --- | --- |
| 27 | 1.2.2 | **요구사항분석** |  | 4d | 2022-04-08 A | 2022-04-11 A |  | 100% |  | 103.2h | 103.2h | 2,064,000 | 2,064,000 | 행위(Activity) |
| 28 | 1.2.2.1 | 요구사항 정의서 작성 | manual | 3d | 2022-04-08 A | 2022-04-10 A | 23 | 100% | 권익현 [50%]; 김미래 [50%]; 김현지 [50%]; 이정훈 [50%]; 이준용 [50%] | 60h | 60h | 1,200,000 | 1,200,000 | 작업(Task) |
| 29 | 1.2.2.2 | 요구사항 정의서 리뷰 | manual | 1d | 2022-04-11 A | 2022-04-11 A | 28 | 100% | 이정훈 [16%]; 권익현 [16%]; 김미래 [16%]; 김현지 [16%]; 이준용 [16%] | 6.4h | 6.4h | 128,000 | 128,000 | 작업(Task) |
| 30 | 1.2.2.3 | 유스케이스 명세서 작성 | manual | 3d | 2022-04-08 A | 2022-04-10 A | 23 | 100% | 이정훈 [50%] | 12h | 12h | 240,000 | 240,000 | 작업(Task) |
| 31 | 1.2.2.4 | 유스케이스 명세서 리뷰 | manual | 1d | 2022-04-11 A | 2022-04-11 A | 30 | 100% | 이정훈 [16%]; 권익현 [16%]; 김미래 [16%]; 김현지 [16%]; 이준용 [16%] | 6.4h | 6.4h | 128,000 | 128,000 | 작업(Task) |
| 32 | 1.2.2.5 | 시나리오 작성 | manual | 3d | 2022-04-08 A | 2022-04-10 A | 23 | 100% | 이준용 [50%] | 12h | 12h | 240,000 | 240,000 | 작업(Task) |
| 33 | 1.2.2.6 | 시나리오 리뷰 | manual | 1d | 2022-04-11 A | 2022-04-11 A | 32 | 100% | 이정훈 [16%]; 권익현 [16%]; 김미래 [16%]; 김현지 [16%]; 이준용 [16%] | 6.4h | 6.4h | 128,000 | 128,000 | 작업(Task) |
| 34 | 1.2.3 | **관리계획** |  | 4d | 2022-04-08 A | 2022-04-11 A |  | 100% |  | 55.2h | 55.2h | 1,104,000 | 1,104,000 | 행위(Activity) |
| 35 | 1.2.3.1 | 형상관리 계획서 작성 | manual | 3d | 2022-04-08 A | 2022-04-10 A |  | 100% | 권익현 [50%] | 12h | 12h | 240,000 | 240,000 | 작업(Task) |
| 36 | 1.2.3.2 | 형상관리 계획서 리뷰 | manual | 1d | 2022-04-11 A | 2022-04-11 A | 35 | 100% | 이정훈 [16%]; 이준용 [16%]; 권익현 [16%]; 김미래 [16%]; 김현지 [16%] | 6.4h | 6.4h | 128,000 | 128,000 | 작업(Task) |
| 37 | 1.2.3.3 | 품질관리 계획서 작성 | manual | 3d | 2022-04-08 A | 2022-04-10 A |  | 100% | 김현지 [50%] | 12h | 12h | 240,000 | 240,000 | 작업(Task) |
| 38 | 1.2.3.4 | 품질관리 계획서 리뷰 | manual | 1d | 2022-04-11 A | 2022-04-11 A | 37 | 100% | 이정훈 [16%]; 권익현 [16%]; 김미래 [16%]; 김현지 [16%]; 이준용 [16%] | 6.4h | 6.4h | 128,000 | 128,000 | 작업(Task) |
| 39 | 1.2.3.5 | 위험관리 계획서 작성 | manual | 3d | 2022-04-08 A | 2022-04-10 A |  | 100% | 김미래 [50%] | 12h | 12h | 240,000 | 240,000 | 작업(Task) |
| 40 | 1.2.3.6 | 위험관리 계획서 리뷰 | manual | 1d | 2022-04-11 A | 2022-04-11 A | 39 | 100% | 이정훈 [16%]; 권익현 [16%]; 김미래 [16%]; 김현지 [16%]; 이준용 [16%] | 6.4h | 6.4h | 128,000 | 128,000 | 작업(Task) |
| 41 | 1.2.4 | **테스트계획** |  | 3d | 2022-04-12 A | 2022-04-14 A |  | 100% |  | 120h | 120h | 2,400,000 | 2,400,000 | 행위(Activity) |
| 42 | 1.2.4.1 | 단위테스트 계획서 작성 | manual | 2d | 2022-04-12 A | 2022-04-13 A |  | 100% | 권익현; 김미래 [50%]; 김현지 [50%]; 이정훈; 이준용 | 64h | 64h | 1,280,000 | 1,280,000 | 작업(Task) |
| 43 | 1.2.4.2 | 단위테스트 계획서 리뷰 | manual | 1d | 2022-04-14 A | 2022-04-14 A | 42 | 100% | 이정훈 [50%]; 권익현 [50%]; 김미래 [50%]; 김현지 [50%]; 이준용 [50%] | 20h | 20h | 400,000 | 400,000 | 작업(Task) |
| 44 | 1.2.4.3 | 통합테스트 계획서 작성 | manual | 2d | 2022-04-12 A | 2022-04-13 A |  | 100% | 김현지 [50%]; 김미래 [50%] | 16h | 16h | 320,000 | 320,000 | 작업(Task) |
| 45 | 1.2.4.4 | 통합테스트 계획서 리뷰 | manual | 1d | 2022-04-14 A | 2022-04-14 A | 44 | 100% | 이정훈 [50%]; 권익현 [50%]; 김미래 [50%]; 김현지 [50%]; 이준용 [50%] | 20h | 20h | 400,000 | 400,000 | 작업(Task) |
| 46 | 1.3 | **설계단계** |  | 10d | 2022-04-15 A | 2022-04-24 A |  | 100% |  | 334h | 334h | 6,680,000 | 6,680,000 | 단계(Phase) |
| 47 | 1.3.1 | **설계** |  | 10d | 2022-04-15 A | 2022-04-24 A |  | 100% |  | 334h | 334h | 6,680,000 | 6,680,000 | 행위(Activity) |
| 48 | 1.3.1.1 | 스토리보드 작성 | manual | 1d | 2022-04-15 A | 2022-04-15 A |  | 100% | 권익현; 김미래; 김현지; 이정훈; 이준용 | 40h | 40h | 800,000 | 800,000 | 작업(Task) |
| 49 | 1.3.1.2 | UI/UX 설계 | manual | 4d | 2022-04-17 A | 2022-04-20 A |  | 100% | 권익현 [33%]; 김현지 [33%]; 김미래 [33%]; 이정훈 [33%]; 이준용 [33%] | 52.8h | 52.8h | 1,056,000 | 1,056,000 | 작업(Task) |
| 50 | 1.3.1.3 | UI/UX 설계 리뷰 | manual | 1d | 2022-04-21 A | 2022-04-21 A | 49 | 100% | 이정훈 [33%]; 권익현 [33%]; 김미래 [33%]; 김현지 [33%]; 이준용 [33%] | 13.2h | 13.2h | 264,000 | 264,000 | 작업(Task) |
| 51 | 1.3.1.4 | DB 설계 | manual | 4d | 2022-04-17 A | 2022-04-20 A |  | 100% | 권익현 [33%]; 김미래 [33%]; 김현지 [33%]; 이정훈 [33%]; 이준용 [33%] | 52.8h | 52.8h | 1,056,000 | 1,056,000 | 작업(Task) |
| 52 | 1.3.1.5 | DB 설계 리뷰 | manual | 1d | 2022-04-21 A | 2022-04-21 A | 51 | 100% | 이정훈 [33%]; 권익현 [33%]; 김미래 [33%]; 김현지 [33%]; 이준용 [33%] | 13.2h | 13.2h | 264,000 | 264,000 | 작업(Task) |
| 53 | 1.3.1.6 | 아키텍처 설계 | manual | 4d | 2022-04-17 A | 2022-04-20 A |  | 100% | 권익현 [33%]; 김미래 [33%]; 김현지 [33%]; 이정훈 [33%]; 이준용 [33%] | 52.8h | 52.8h | 1,056,000 | 1,056,000 | 작업(Task) |
| 54 | 1.3.1.7 | 아키텍처 설계 리뷰 | manual | 1d | 2022-04-21 A | 2022-04-21 A | 53 | 100% | 이정훈 [33%]; 권익현 [33%]; 김미래 [33%]; 김현지 [33%]; 이준용 [33%] | 13.2h | 13.2h | 264,000 | 264,000 | 작업(Task) |
| 55 | 1.3.1.8 | 기본설계서 작성 | manual | 1d | 2022-04-22 A | 2022-04-22 A | 50, 52, 54 | 100% | 권익현 [50%]; 김미래 [50%]; 김현지 [50%]; 이정훈 [50%]; 이준용 [50%] | 20h | 20h | 400,000 | 400,000 | 작업(Task) |
| 56 | 1.3.1.9 | 기본설계서 취합 | manual | 1d | 2022-04-23 A | 2022-04-23 A | 55 | 100% | 김미래 | 8h | 8h | 160,000 | 160,000 | 작업(Task) |
| 57 | 1.3.1.10 | 기본설계서 리뷰 | manual | 1d | 2022-04-24 A | 2022-04-24 A | 56 | 100% | 이정훈 [50%]; 권익현 [50%]; 김미래 [50%]; 김현지 [50%]; 이준용 [50%] | 20h | 20h | 400,000 | 400,000 | 작업(Task) |
| 58 | 1.3.1.11 | 상세설계서 작성 | manual | 1d | 2022-04-22 A | 2022-04-22 A | 50, 52, 54 | 100% | 권익현 [50%]; 김미래 [50%]; 김현지 [50%]; 이정훈 [50%]; 이준용 [50%] | 20h | 20h | 400,000 | 400,000 | 작업(Task) |
| 59 | 1.3.1.12 | 상세설계서 취합 | manual | 1d | 2022-04-23 A | 2022-04-23 A | 55 | 100% | 김현지 | 8h | 8h | 160,000 | 160,000 | 작업(Task) |
| 60 | 1.3.1.13 | 상세설계서 리뷰 | manual | 1d | 2022-04-24 A | 2022-04-24 A | 56 | 100% | 이정훈 [50%]; 권익현 [50%]; 김미래 [50%]; 김현지 [50%]; 이준용 [50%] | 20h | 20h | 400,000 | 400,000 | 작업(Task) |

| ID | WBS | Task | Type | Duration | Start | Finish | Predecessors | Complete | Actual start | Resources | Work | Actual work | Cost | Actual cost | Text1 |
| --- | --- | --- | --- | --- | --- | --- | --- | --- | --- | --- | --- | --- | --- | --- | --- |
| 61 | 1.4 | **구현단계** |  | 41d | 2022-04-26 A | 2022-06-05 A |  | 100% |  |  | 1496h | 1496h | 29,920,000 | 29,920,000 | 단계(Phase) |
| 62 | 1.4.1 | **개발 환경 셋업** |  | 3d | 2022-04-26 A | 2022-04-28 A |  | 100% |  |  | 48h | 48h | 960,000 | 960,000 | 행위(Activity) |
| 63 | 1.4.1.1 | Android Studio 설치 | manual | 1d | 2022-04-26 A | 2022-04-26 A |  | 100% |  | 권익현 [50%]; 김미래 [50%]; 김현지 [50%]; 이정훈 [50%]; 이준용 [25%] | 18h | 18h | 360,000 | 360,000 | 작업(Task) |
| 64 | 1.4.1.2 | 언어 및 라이브러리 버전 통일 | manual | 1d | 2022-04-26 A | 2022-04-26 A |  | 100% |  | 권익현 [50%]; 김미래 [50%]; 김현지 [50%]; 이정훈 [50%]; 이준용 [25%] | 18h | 18h | 360,000 | 360,000 | 작업(Task) |
| 65 | 1.4.1.3 | 서버 구축 | manual | 3d | 2022-04-26 A | 2022-04-28 A |  | 100% |  | 이준용 [50%] | 12h | 12h | 240,000 | 240,000 | 작업(Task) |
| 66 | 1.4.2 | **구현** |  | 32d | 2022-04-29 A | 2022-05-30 A |  | 100% |  |  | 1280h | 1280h | 25,600,000 | 25,600,000 | 행위(Activity) |
| 67 | 1.4.2.1 | 인수인계 모듈 구현 | manual | 32d | 2022-04-29 A | 2022-05-30 A | 62 | 100% |  | 권익현 | 256h | 256h | 5,120,000 | 5,120,000 | 작업(Task) |
| 68 | 1.4.2.2 | EMR 모듈 구현 | manual | 32d | 2022-04-29 A | 2022-05-30 A | 62 | 100% |  | 김미래 | 256h | 256h | 5,120,000 | 5,120,000 | 작업(Task) |
| 69 | 1.4.2.3 | 스케줄러 모듈 구현 | manual | 32d | 2022-04-29 A | 2022-05-30 A | 62 | 100% |  | 김현지 | 256h | 256h | 5,120,000 | 5,120,000 | 작업(Task) |
| 70 | 1.4.2.4 | 투약관리 모듈 구현 | manual | 32d | 2022-04-29 A | 2022-05-30 A | 62 | 100% |  | 이정훈 | 256h | 256h | 5,120,000 | 5,120,000 | 작업(Task) |
| 71 | 1.4.2.5 | 메인 모듈 구현 | manual | 32d | 2022-04-29 A | 2022-05-30 A | 62 | 100% |  | 이준용 | 256h | 256h | 5,120,000 | 5,120,000 | 작업(Task) |
| 72 | 1.4.3 | **단위시험** |  | 3d | 2022-05-31 A | 2022-06-02 A |  | 100% |  |  | 120h | 120h | 2,400,000 | 2,400,000 | 행위(Activity) |
| 73 | 1.4.3.1 | 모듈 단위 테스트 | manual | 2d | 2022-05-31 A | 2022-06-01 A | 66 | 100% |  | 권익현; 김미래; 김현지; 이정훈; 이준용 | 80h | 80h | 1,600,000 | 1,600,000 | 작업(Task) |
| 74 | 1.4.3.2 | 모듈 단위 테스트 결과서 작성 | manual | 1d | 2022-06-02 A | 2022-06-02 A | 73 | 100% |  | 권익현 [50%]; 김미래 [50%]; 김현지 [50%]; 이정훈 [50%]; 이준용 [50%] | 20h | 20h | 400,000 | 400,000 | 작업(Task) |
| 75 | 1.4.3.3 | 모듈 테스트 결과 리뷰 | manual | 1d | 2022-06-02 A | 2022-06-02 A | 73 | 100% |  | 이정훈 [50%]; 권익현 [50%]; 김미래 [50%]; 김현지 [50%]; 이준용 [50%] | 20h | 20h | 400,000 | 400,000 | 작업(Task) |
| 76 | 1.4.4 | **모듈 취합** |  | 3d | 2022-06-03 A | 2022-06-05 A |  | 100% |  |  | 48h | 48h | 960,000 | 960,000 | 행위(Activity) |
| 77 | 1.4.4.1 | 모듈 취합 | manual | 3d | 2022-06-03 A | 2022-06-05 A | 75 | 100% |  | 김미래; 김현지 | 48h | 48h | 960,000 | 960,000 | 작업(Task) |
| 78 | 1.5 | **시험단계** |  | 11d | 2022-06-06 A | 2022-06-16 A | 77 | 100% |  |  | 353.92h | 353.92h | 7,078,400 | 7,078,400 | 단계(Phase) |
| 79 | 1.5.1 | **테스트** |  | 8d | 2022-06-06 A | 2022-06-13 A |  | 100% |  |  | 76.96h | 76.96h | 1,539,200 | 1,539,200 | 행위(Activity) |
| 80 | 1.5.1.1 | 통합 테스트 | manual | 4d | 2022-06-06 A | 2022-06-09 A |  | 100% |  | 김미래 [33%]; 김현지 [33%] | 21.12h | 21.12h | 422,400 | 422,400 | 작업(Task) |
| 81 | 1.5.1.2 | 통합 테스트 결과서 작성 | manual | 3d | 2022-06-10 A | 2022-06-12 A |  | 100% |  | 김미래 [33%]; 김현지 [33%] | 15.84h | 15.84h | 316,800 | 316,800 | 작업(Task) |
| 82 | 1.5.1.3 | 통합 테스트 리뷰 | manual | 1d | 2022-06-13 A | 2022-06-13 A | 81 | 100% |  | 이정훈; 권익현; 김미래; 김현지; 이준용 | 40h | 40h | 800,000 | 800,000 | 작업(Task) |
| 83 | 1.5.2 | 버그 수정 | manual | 7d | 2022-06-06 A | 2022-06-12 A |  | 100% |  | 권익현; 김미래 [33%]; 김현지 [33%]; 이정훈; 이준용 | 204.96h | 204.96h | 4,099,200 | 4,099,200 | 행위(Activity) |
| 84 | 1.5.3 | **매뉴얼 작성** |  | 4d | 2022-06-13 | 2022-06-16 A |  | 100% | 2022-06-14 |  | 72h | 72h | 1,440,000 | 1,440,000 | 행위(Activity) |
| 85 | 1.5.3.1 | 사용자 매뉴얼 작성 | manual | 2d | 2022-06-14 A | 2022-06-15 A |  | 100% |  | 김미래 | 16h | 16h | 320,000 | 320,000 | 작업(Task) |
| 86 | 1.5.3.2 | 관리자 매뉴얼 작성 | manual | 2d | 2022-06-14 A | 2022-06-15 A |  | 100% |  | 김현지 | 16h | 16h | 320,000 | 320,000 | 작업(Task) |
| 87 | 1.5.3.3 | 매뉴얼 리뷰 | manual | 1d | 2022-06-16 A | 2022-06-16 A | 85, 86 | 100% |  | 이정훈; 권익현; 김미래; 김현지; 이준용 | 40h | 40h | 800,000 | 800,000 | 작업(Task) |

| ID | WBS | Task | Type | Duration | Start | Finish | Complete | Resources | Work | Actual work | Cost | Actual cost | Text1 |
| --- | --- | --- | --- | --- | --- | --- | --- | --- | --- | --- | --- | --- | --- |
| 88 | 1.6 | **유지보수** |  | 2d | 2022-06-17 A | 2022-06-18 A | 100% |  | 32h | 32h | 640,000 | 640,000 | 단계(Phase) |
| 89 | 1.6.1 | 산출물 정리 | manual | 2d | 2022-06-17 A | 2022-06-18 A | 100% | 권익현; 이준용 | 32h | 32h | 640,000 | 640,000 |  |
